# DiagramaTalleresCorregido

Schedule from MS Project, 2026-10-07 to 2026-10-29, A marks actual dates.

## Calendars

- Estándar: Mon-Fri 09:00-13:00, 15:00-19:00; Sat-Sun off.

## Resources

| Resource |
| --- |
| Gonzalo |
| Andrea |
| Santiago |

## Schedule

| ID | WBS | Task | Type | Duration | Start | Finish | Predecessors | Complete | Remaining | Total slack | Free slack | Resources | Work | Actual work |
| --- | --- | --- | --- | --- | --- | --- | --- | --- | --- | --- | --- | --- | --- | --- |
| 1 | 1 | **FASE 0: ARQUITECTURA Y BASE DE DATOS** |  | 5d | 2026-10-07 09:00 A | 2026-10-13 19:00 |  | 94% | 0.29d |  |  |  | 76h | 73h |
| 2 | 1.1 | 0.1 Dos bases de datos (principal y estudiantes) y router EstudiantesRouter |  | 2d | 2026-10-07 09:00 A | 2026-10-08 19:00 A |  | 100% |  |  |  | Gonzalo | 16h | 16h |
| 3 | 1.2 | 0.2 Modelos Taller, Inscripción, Historial, Usuario y EstudianteEstatico (solo lectura) |  | 1.5d | 2026-10-09 09:00 A | 2026-10-12 13:00 A | 2 | 100% |  |  |  | Gonzalo; Andrea | 24h | 24h |
| 4 | 1.3 | 0.3 Revisar reglas contra el Excel y acordar los casos de prueba |  | 1.5d | 2026-10-07 09:00 A | 2026-10-08 13:00 A |  | 100% |  |  |  | Santiago; Andrea | 24h | 24h |
| 5 | 1.4 | 0.4 Configurar SQL |  | 1.5d | 2026-10-12 15:00 A | 2026-10-13 19:00 | 3 | 75% | 0.38d | 11d | 0d | Gonzalo | 12h | 9h |
| 6 | 2 | Hito: modelos listos para desarrollar las historias | milestone | 0d | 2026-10-12 13:00 | 2026-10-12 13:00 | 3, 4 |  |  | 1.12d | 0d |  |  |  |
| 7 | 3 | **HU-01: Publicar talleres con código único** |  | 3.5d | 2026-10-12 15:00 A | 2026-10-15 19:00 |  | 61% | 1.38d | 10d |  |  | 28h | 17h |
| 8 | 3.1 | HU-01 · Lógica: registrar y editar taller, código TAL-DAN-01 |  | 1.5d | 2026-10-12 15:00 A | 2026-10-13 19:00 | 6 | 75% | 0.38d | 1.25d | 1d | Gonzalo | 12h | 9h |
| 9 | 3.2 | HU-01 · Pruebas pytest |  | 0.5d | 2026-10-14 09:00 A | 2026-10-14 13:00 A | 8 | 100% |  |  |  | Andrea | 4h | 4h |
| 10 | 3.3 | HU-01 · HTML básico: formulario de taller y lista de talleres |  | 0.5d | 2026-10-14 15:00 A | 2026-10-14 19:00 | 6, 9 | 50% | 0.25d | 0.25d | 0d | Santiago | 4h | 2h |
| 11 | 3.4 | HU-01 · Conectar vista con la lógica y la base de datos |  | 1d | 2026-10-15 09:00 A | 2026-10-15 19:00 | 10, 8 | 25% | 0.75d | 10d | 0d | Santiago | 8h | 2h |
| 12 | 3.5 | Hito: HU-01 terminada y probada | milestone | 0d | 2026-10-15 19:00 | 2026-10-15 19:00 | 9, 11 |  |  | 10d |  |  |  |  |
| 13 | 4 | **HU-02: Solicitar una plaza** |  | 4d | 2026-10-12 15:00 A | 2026-10-16 13:00 |  | 86% | 0.57d | 9.5d |  |  | 44h | 40h |
| 14 | 4.1 | HU-02 · Lógica: ajustar código existente: confirmar, espera 20 % y rechazos |  | 1d | 2026-10-12 15:00 A | 2026-10-13 13:00 A | 6 | 100% |  |  |  | Andrea; Gonzalo | 16h | 16h |
| 15 | 4.2 | HU-02 · Pruebas pytest |  | 1d | 2026-10-13 15:00 A | 2026-10-14 13:00 A | 14 | 100% |  |  |  | Andrea; Gonzalo | 16h | 16h |
| 16 | 4.3 | HU-02 · HTML básico: botón y mensaje 'Solicitar plaza' |  | 0.5d | 2026-10-15 09:00 A | 2026-10-15 13:00 A | 10 | 100% |  |  |  | Santiago | 4h | 4h |
| 17 | 4.4 | HU-02 · Conectar vista con la lógica y la base de datos |  | 1d | 2026-10-15 15:00 A | 2026-10-16 13:00 | 16, 14 | 50% | 0.5d | 9.5d | 0d | Santiago | 8h | 4h |
| 18 | 4.5 | Hito: HU-02 terminada y probada | milestone | 0d | 2026-10-16 13:00 | 2026-10-16 13:00 | 15, 17 |  |  | 9.5d |  |  |  |  |
| 19 | 5 | **HU-03: Registrar inscripciones como operador** |  | 3d | 2026-10-14 15:00 A | 2026-10-19 13:00 A |  | 100% |  |  |  |  | 24h | 24h |
| 20 | 5.1 | HU-03 · Lógica: registrar a nombre del participante |  | 0.5d | 2026-10-14 15:00 A | 2026-10-14 19:00 A | 15 | 100% |  |  |  | Andrea; Gonzalo | 8h | 8h |
| 21 | 5.2 | HU-03 · Pruebas pytest |  | 0.5d | 2026-10-15 09:00 A | 2026-10-15 13:00 A | 20 | 100% |  |  |  | Gonzalo | 4h | 4h |
| 22 | 5.3 | HU-03 · HTML básico: formulario del operador |  | 0.5d | 2026-10-15 15:00 A | 2026-10-15 19:00 A | 16 | 100% |  |  |  | Santiago | 4h | 4h |
| 23 | 5.4 | HU-03 · Conectar vista con la lógica y la base de datos |  | 1d | 2026-10-16 15:00 A | 2026-10-19 13:00 A | 17, 20, 22 | 100% |  |  |  | Santiago | 8h | 8h |
| 24 | 5.5 | Hito: HU-03 terminada y probada | milestone | 0d | 2026-10-19 13:00 A | 2026-10-19 13:00 A | 21, 23 | 100% |  |  |  |  |  |  |

| ID | WBS | Task | Type | Duration | Start | Finish | Predecessors | Complete | Remaining | Total slack | Free slack | Resources | Work | Actual work |
| --- | --- | --- | --- | --- | --- | --- | --- | --- | --- | --- | --- | --- | --- | --- |
| 25 | 6 | **HU-04: Definir y cambiar el cupo** |  | 2.5d | 2026-10-16 09:00 A | 2026-10-20 13:00 |  | 36% | 1.61d | 7.5d |  |  | 28h | 10h |
| 26 | 6.1 | HU-04 · Lógica: aumentar cupo, confirmar espera y guardar historial |  | 1.5d | 2026-10-16 09:00 A | 2026-10-19 13:00 | 9, 14, 22 | 50% | 0.75d | 0.5d | 0d | Gonzalo | 12h | 6h |
| 27 | 6.2 | HU-04 · Pruebas pytest |  | 1d | 2026-10-19 15:00 A | 2026-10-20 13:00 | 26 | 50% | 0.5d | 0.25d | 0d | Andrea | 8h | 4h |
| 28 | 6.3 | HU-04 · HTML básico: cambiar cupo con motivo |  | 0.5d | 2026-10-19 15:00 | 2026-10-19 19:00 | 22, 26 |  |  | 0.5d | 0d | Santiago | 4h |  |
| 29 | 6.4 | HU-04 · Conectar vista con la lógica y la base de datos |  | 0.5d | 2026-10-20 09:00 | 2026-10-20 13:00 | 28, 26 |  |  | 4.5d | 0d | Santiago | 4h |  |
| 30 | 6.5 | Hito: HU-04 terminada y probada | milestone | 0d | 2026-10-20 13:00 | 2026-10-20 13:00 | 27, 29 |  |  | 7.5d |  |  |  |  |
| 31 | 7 | **HU-05: Cancelar mi inscripción** |  | 4.5d | 2026-10-15 15:00 A | 2026-10-21 19:00 |  | 40% | 2.7d | 6d |  |  | 24h | 12h |
| 32 | 7.1 | HU-05 · Lógica: ajustar código existente: cancelar hasta 3 h antes |  | 0.5d | 2026-10-15 15:00 A | 2026-10-15 19:00 A | 21 | 100% |  |  |  | Andrea; Gonzalo | 8h | 8h |
| 33 | 7.2 | HU-05 · Pruebas pytest: hasta 3 h antes, después del plazo, cancelación repetida |  | 1d | 2026-10-20 09:00 A | 2026-10-20 19:00 | 32, 28 | 50% | 0.5d | 0.25d | 0d | Santiago | 8h | 4h |
| 34 | 7.3 | HU-05 · HTML básico: botón 'Cancelar' |  | 0.5d | 2026-10-21 09:00 | 2026-10-21 13:00 | 28, 33 |  |  | 0.25d | 0d | Santiago | 4h |  |
| 35 | 7.4 | HU-05 · Conectar vista con la lógica y la base de datos |  | 0.5d | 2026-10-21 15:00 | 2026-10-21 19:00 | 32, 34 |  |  | 6d | 0d | Gonzalo | 4h |  |
| 36 | 7.5 | Hito: HU-05 terminada y probada | milestone | 0d | 2026-10-21 19:00 | 2026-10-21 19:00 | 33, 35 |  |  | 6d |  |  |  |  |
| 37 | 8 | **HU-06: Controlar cancelaciones y promover la espera** |  | 4.5d | 2026-10-16 09:00 A | 2026-10-22 13:00 |  | 15% | 3.83d | 5.5d |  |  | 32h | 4h |
| 38 | 8.1 | HU-06 · Lógica: ajustar código existente: promoción automática |  | 0.5d | 2026-10-16 09:00 A | 2026-10-16 13:00 | 32 | 25% | 0.38d | 0.75d | 0d | Andrea; Gonzalo | 8h | 2h |
| 39 | 8.2 | HU-06 · Pruebas pytest: promoción del primero, mensaje 'Felicidades, ya estás inscrito', posiciones |  | 1d | 2026-10-16 15:00 | 2026-10-19 13:00 | 38 |  |  | 0.75d | 0d | Andrea; Gonzalo | 16h |  |
| 40 | 8.3 | HU-06 · HTML básico: cancelación del operador |  | 0.5d | 2026-10-21 15:00 A | 2026-10-21 19:00 | 34 | 50% | 0.25d | 0d |  | Santiago | 4h | 2h |
| 41 | 8.4 | HU-06 · Conectar vista con la lógica y la base de datos |  | 0.5d | 2026-10-22 09:00 | 2026-10-22 13:00 | 38, 40 |  |  | 5.5d | 0d | Gonzalo | 4h |  |
| 42 | 8.5 | Hito: HU-06 terminada y probada | milestone | 0d | 2026-10-22 13:00 | 2026-10-22 13:00 | 39, 41 |  |  | 5.5d |  |  |  |  |
| 43 | 9 | **HU-07: Consultar la ocupación de un taller** |  | 3.5d | 2026-10-19 15:00 | 2026-10-22 19:00 |  |  |  | 2.5d |  |  | 16h |  |
| 44 | 9.1 | HU-07 · Lógica: contar ocupadas, libres y espera |  | 0.5d | 2026-10-19 15:00 | 2026-10-19 19:00 | 26 |  |  | 5d | 0.5d | Santiago | 4h |  |
| 45 | 9.2 | HU-07 · Pruebas pytest: ocupadas, libres, espera/máximo; la consulta no cambia datos |  | 0.5d | 2026-10-20 15:00 | 2026-10-20 19:00 | 44, 29 |  |  | 4.5d | 0d | Andrea | 4h |  |
| 46 | 9.3 | HU-07 · HTML básico: tabla de ocupación |  | 0.5d | 2026-10-22 09:00 | 2026-10-22 13:00 | 40 |  |  | 0d |  | Santiago | 4h |  |
| 47 | 9.4 | HU-07 · Conectar vista con la lógica y la base de datos |  | 0.5d | 2026-10-22 15:00 | 2026-10-22 19:00 | 44, 46 |  |  | 5d | 0d | Gonzalo | 4h |  |
| 48 | 9.5 | Hito: HU-07 terminada y probada | milestone | 0d | 2026-10-22 19:00 | 2026-10-22 19:00 | 45, 47 |  |  | 5d |  |  |  |  |

| ID | WBS | Task | Type | Duration | Start | Finish | Predecessors | Complete | Remaining | Total slack | Free slack | Resources | Work | Actual work |
| --- | --- | --- | --- | --- | --- | --- | --- | --- | --- | --- | --- | --- | --- | --- |
| 49 | 10 | **HU-08: Consultar el estado de mis inscripciones** |  | 4d | 2026-10-19 15:00 | 2026-10-23 13:00 |  |  |  | 0.75d |  |  | 16h |  |
| 50 | 10.1 | HU-08 · Lógica: estado y posición por taller |  | 0.5d | 2026-10-19 15:00 | 2026-10-19 19:00 | 32, 39 |  |  | 0.75d | 0.5d | Andrea | 4h |  |
| 51 | 10.2 | HU-08 · Pruebas pytest: estado y posición de cada inscripción |  | 0.5d | 2026-10-20 15:00 | 2026-10-20 19:00 | 27, 50 |  |  | 0.25d | 0d | Andrea | 4h |  |
| 52 | 10.3 | HU-08 · HTML básico: 'Mis inscripciones' |  | 0.5d | 2026-10-22 15:00 | 2026-10-22 19:00 | 46 |  |  | 0d |  | Santiago | 4h |  |
| 53 | 10.4 | HU-08 · Conectar vista con la lógica y la base de datos |  | 0.5d | 2026-10-23 09:00 | 2026-10-23 13:00 | 50, 52 |  |  | 2.5d | 0d | Gonzalo | 4h |  |
| 54 | 10.5 | Hito: HU-08 terminada y probada | milestone | 0d | 2026-10-23 13:00 | 2026-10-23 13:00 | 51, 53 |  |  | 4.5d |  |  |  |  |
| 55 | 11 | **HU-09: Historial de cancelaciones y bloqueo (provisional)** |  | 4d | 2026-10-21 09:00 A | 2026-10-26 19:00 |  | 8% | 3.67d | 3d |  |  | 24h | 2h |
| 56 | 11.1 | HU-09 · Lógica: historial y bloqueo provisional |  | 1d | 2026-10-21 09:00 A | 2026-10-21 19:00 | 39, 51 | 25% | 0.75d | 1d | 0d | Andrea | 8h | 2h |
| 57 | 11.2 | HU-09 · Pruebas pytest: historial ordenado, más de 3 en 72 h bloquea |  | 1d | 2026-10-23 09:00 | 2026-10-23 19:00 | 52, 56 |  |  | 0d |  | Santiago | 8h |  |
| 58 | 11.3 | HU-09 · HTML básico: historial del participante |  | 0.5d | 2026-10-26 09:00 | 2026-10-26 13:00 | 52, 57 |  |  | 1.5d | 0d | Santiago | 4h |  |
| 59 | 11.4 | HU-09 · Conectar vista con la lógica y la base de datos |  | 0.5d | 2026-10-26 15:00 | 2026-10-26 19:00 | 56, 58 |  |  | 3d | 0d | Gonzalo | 4h |  |
| 60 | 11.5 | Hito: HU-09 terminada y probada | milestone | 0d | 2026-10-26 19:00 | 2026-10-26 19:00 | 57, 59 |  |  | 3d |  |  |  |  |
| 61 | 12 | **HU-10: Buscar inscripciones por participante o taller** |  | 4.5d | 2026-10-21 09:00 | 2026-10-27 13:00 |  |  |  | 2.5d |  |  | 16h |  |
| 62 | 12.1 | HU-10 · Lógica: búsqueda por participante o taller |  | 0.5d | 2026-10-21 09:00 | 2026-10-21 13:00 | 27, 45 |  |  | 4.5d | 2d | Gonzalo | 4h |  |
| 63 | 12.2 | HU-10 · Pruebas pytest: búsqueda por participante y por taller sin cambiar datos |  | 0.5d | 2026-10-23 15:00 | 2026-10-23 19:00 | 53, 62 |  |  | 2.5d | 0d | Santiago | 4h |  |
| 64 | 12.3 | HU-10 · HTML básico: buscador del operador |  | 0.5d | 2026-10-26 15:00 | 2026-10-26 19:00 | 58 |  |  | 1.5d | 0d | Santiago | 4h |  |
| 65 | 12.4 | HU-10 · Conectar vista con la lógica y la base de datos |  | 0.5d | 2026-10-27 09:00 | 2026-10-27 13:00 | 62, 64 |  |  | 1.5d | 0d | Gonzalo | 4h |  |
| 66 | 12.5 | Hito: HU-10 terminada y probada | milestone | 0d | 2026-10-27 13:00 | 2026-10-27 13:00 | 63, 65 |  |  | 2.5d |  |  |  |  |
| 67 | 13 | **HU-11: Lista de confirmados para el instructor** |  | 2.5d | 2026-10-26 09:00 | 2026-10-28 13:00 |  |  |  | 1.5d |  |  | 16h |  |
| 68 | 13.1 | HU-11 · Lógica: listar solo confirmados |  | 0.5d | 2026-10-26 09:00 | 2026-10-26 13:00 | 63 |  |  | 2.5d | 1d | Andrea | 4h |  |
| 69 | 13.2 | HU-11 · Pruebas pytest: solo aparecen confirmados |  | 0.5d | 2026-10-27 15:00 | 2026-10-27 19:00 | 65, 68 |  |  | 1.5d | 0d | Andrea | 4h |  |
| 70 | 13.3 | HU-11 · HTML básico: lista del instructor |  | 0.5d | 2026-10-27 09:00 | 2026-10-27 13:00 | 64 |  |  | 2d | 0.5d | Santiago | 4h |  |
| 71 | 13.4 | HU-11 · Conectar vista con la lógica y la base de datos |  | 0.5d | 2026-10-28 09:00 | 2026-10-28 13:00 | 68, 69, 70 |  |  | 1.5d | 0d | Gonzalo | 4h |  |
| 72 | 13.5 | Hito: HU-11 terminada y probada | milestone | 0d | 2026-10-28 13:00 | 2026-10-28 13:00 | 69, 71 |  |  | 1.5d |  |  |  |  |

| ID | WBS | Task | Duration | Start | Finish | Predecessors | Total slack |
| --- | --- | --- | --- | --- | --- | --- | --- |
| 73 | 14 | **FASE FINAL: INTEGRACIÓN, CAMBIOS Y ENTREGA** | 12d | 2026-10-14 09:00 | 2026-10-29 19:00 |  | 0d |
| 74 | 14.1 | Cargar datos de demostración en SQL | 1d | 2026-10-14 09:00 | 2026-10-14 19:00 | 5 | 11d |
| 75 | 14.2 | Solicitudes simultáneas por la última plaza (TAL-RC-01) | 1d | 2026-10-26 09:00 | 2026-10-26 19:00 | 57 | 0d |
| 76 | 14.3 | CU-17 · Cancelar un taller completo, lógica y pruebas (provisional) | 1d | 2026-10-27 09:00 | 2026-10-27 19:00 | 57, 75 | 2d |
| 77 | 14.4 | CU-18 · Reducir el cupo, lógica y pruebas (cuando el cliente defina quién pasa a espera) | 1d | 2026-10-22 09:00 | 2026-10-22 19:00 | 27, 56 | 5d |
| 78 | 14.5 | Pruebas de integración con la base de datos y CI en main | 1d | 2026-10-27 09:00 | 2026-10-27 19:00 | 57, 75 | 0d |
| 79 | 14.6 | README, instrucciones y matriz requisitos-pruebas | 1d | 2026-10-28 09:00 | 2026-10-28 19:00 | 78 | 0d |
| 80 | 14.7 | Ensayo de la demostración y correcciones | 1d | 2026-10-29 09:00 | 2026-10-29 19:00 | 79 | 0d |
